# Antibot Ad Arte

Schedule from GanttProject, 2026-04-27 to 2026-05-12.
Prisma
Validazione protezioni antiBot WAF Fortinet su ambiente di collaudo Ad Arte. 5 BOT (DoS, ATO, Registration, Content Scraping, Price Scraping) eseguiti da fleet Linode (5 VM in nl-ams) per dimostrare la corretta detection. Il ticket PSN per la whitelist viene aperto subito dopo il discovery in modo che la wait corra in parallelo allo sviluppo e non blocchi il critical path.

## Calendars

- Project calendar: Mon-Fri working; Sat-Sun off.

## Resources

| Resource |
| --- |
| Dev |
| PSN |
| Cliente Ad Arte |

## Schedule

| ID | WBS | Task | Duration | Start | Finish | Predecessors | Resources |
| --- | --- | --- | --- | --- | --- | --- | --- |
| 1 | 1 | Discovery e design | 2d | 2026-04-27 | 2026-04-28 |  | Dev |
| 2 | 2 | Apertura ticket PSN whitelist WAF | 1d | 2026-04-29 | 2026-04-29 | 1 | Dev |
| 3 | 3 | Wait PSN + whitelist applicata | 2d | 2026-04-30 | 2026-05-01 | 2 | PSN |
| 4 | 4 | Build core framework | 3d | 2026-04-29 | 2026-05-01 | 1 | Dev |
| 5 | 5 | **Implementazione BOT** | 4d | 2026-05-04 | 2026-05-07 | 4 |  |
| 6 | 5.1 | HTTP (BOT-1 DoS + BOT-2 ATO) | 3d | 2026-05-04 | 2026-05-06 |  | Dev |
| 7 | 5.2 | Browser (BOT-4 Content + BOT-5 Price) | 4d | 2026-05-04 | 2026-05-07 |  | Dev |
| 8 | 5.3 | Admin API (BOT-3 Registration) | 3d | 2026-05-04 | 2026-05-06 |  | Dev |
| 9 | 6 | **Infrastruttura e credenziali** | 2d | 2026-05-04 | 2026-05-05 | 4 |  |
| 10 | 6.1 | Estrazione credenziali collaudo | 1d | 2026-05-04 | 2026-05-04 |  | Dev |
| 11 | 6.2 | Provisioning Linode fleet | 2d | 2026-05-05 | 2026-05-06 |  | Dev |
| 12 | 7 | Esecuzione test | 1d | 2026-05-08 | 2026-05-08 | 3, 5, 9 | Dev |
| 13 | 8 | Report e delivery | 2d | 2026-05-11 | 2026-05-12 | 12 | Dev |

Notes:
- 1: Lettura specifica, Excel endpoint, swagger collaudo. Decisioni architetturali (Linode fleet vs locale, dry-run safety, branching).
- 2: Ticket PSN con domanda semantica whitelist (admit-only vs admit+bypass antiBot) e IP fleet. Aperto subito dopo discovery in modo che la wait corra in parallelo.
- 3: Attesa risposta PSN + applicazione whitelist sui 5 IP del fleet. Non sul critical path se il dev stream finisce dopo.
- 4: Repo, scaffolding Python (uv + ruff + mypy), Dockerfile, CI GitHub Actions, runner generico, WAF signals classifier, reporter Markdown.
- 5: 3 stream paralleli sopra il core framework.
- 6: httpx async, dry-run safe, BOT-1 con env safety WAF_BOTS_ALLOW_DOS.
- 7: Playwright Chromium headless, navigator.webdriver=true di default (no stealth).
- 8: Keycloak realm AD-Arte-visitors, password grant + POST /admin/realms/.../users, refresh token su 401.
- 9: Stream parallelo: estrazione cred Keycloak da K8s collaudo + provisioning fleet Linode 5 VM in nl-ams (2x g6-standard-1 + 3x g6-standard-2).
- 11: SSH key + StackScript LF + 5 VM. Build immagine Docker su ciascuna VM via git clone (repo pubblico).
- 12: Run BOT-2/3/4/5 (low risk first) + BOT-1 con pre-mortem firmato, ramp graduale concorrenza.
- 13: Consolidamento JSON->Markdown, integrazione log FortiGate forniti dal SOC, delivery cliente, teardown fleet.
